# Lịch trình sách thiếu nhi

Schedule from MS Project, 2015-04-06 to 2015-11-26, costs in $, A marks actual dates.
Lucerne Publishing

## Calendars

- Standard: Mon-Fri 08:00-12:00, 13:00-17:00; Sat-Sun off.
- Monday-Wednesday: Mon-Wed 08:00-12:00, 13:00-17:00; Thu-Sun off.

## Resources

| Resource | Group | Unit | Rate |
| --- | --- | --- | --- |
| Carole Poland | Editorial |  | 52.5 |
| Copyeditors | Editorial |  | 45 |
| Dan Jump | Design |  | 75.5 |
| Hany Morcos | Editorial |  | 38.75 |
| Jane Dow | Editorial |  | 63.25 |
| Jun Cao | Editorial |  | 42 |
| Luis Sousa | Design |  | 70 |
| Printing Service | Production |  |  |
| Travel | Other |  |  |
| Tad Orman | Other |  |  |
| Color Setting Services | Production |  |  |
| Bound galley proofs | Production | copies | 15 |
| Đánh giá bản vẽ gốc |  |  |  |

## Schedule

| ID | WBS | Task | Type | Duration | Start | Finish | Predecessors | Complete | Remaining | Baseline start | Baseline finish | Baseline duration | Total slack | Free slack | Constraint | Deadline | Resources | Work | Actual work | Cost | Baseline cost | Actual cost | Editorial Focus |
| --- | --- | --- | --- | --- | --- | --- | --- | --- | --- | --- | --- | --- | --- | --- | --- | --- | --- | --- | --- | --- | --- | --- | --- |
| 1 | 1 | **Họp ban biên tập** |  | 60.12d | 2015-04-13 08:00 A | 2015-07-06 09:00 |  | 54% | 27.75d | 2015-04-13 08:00 | 2015-07-06 09:00 | 60.12d | 103.88d |  |  |  |  | 45.5h | 24.5h | 2,223 | 2,223 | 1,197 |  |
| 2 | 1.1 | Editorial staff meeting 1 |  | 1h | 2015-04-13 08:00 A | 2015-04-13 09:00 A |  | 100% |  | 2015-04-13 08:00 | 2015-04-13 09:00 | 1h |  |  | start no earlier than 2015-04-13 08:00 |  | Carole Poland; Jun Cao; Hany Morcos; Dan Jump [50%] | 3.5h | 3.5h | 171 | 171 | 171 |  |
| 3 | 1.2 | Editorial staff meeting 2 |  | 1h | 2015-04-20 08:00 A | 2015-04-20 09:00 A |  | 100% |  | 2015-04-20 08:00 | 2015-04-20 09:00 | 1h |  |  | start no earlier than 2015-04-20 08:00 |  | Carole Poland; Jun Cao; Hany Morcos; Dan Jump [50%] | 3.5h | 3.5h | 171 | 171 | 171 |  |
| 4 | 1.3 | Editorial staff meeting 3 |  | 1h | 2015-04-27 08:00 A | 2015-04-27 09:00 A |  | 100% |  | 2015-04-27 08:00 | 2015-04-27 09:00 | 1h |  |  | start no earlier than 2015-04-27 08:00 |  | Carole Poland; Jun Cao; Hany Morcos; Dan Jump [50%] | 3.5h | 3.5h | 171 | 171 | 171 |  |
| 5 | 1.4 | Editorial staff meeting 4 |  | 1h | 2015-05-04 08:00 A | 2015-05-04 09:00 A |  | 100% |  | 2015-05-04 08:00 | 2015-05-04 09:00 | 1h |  |  | start no earlier than 2015-05-04 08:00 |  | Carole Poland; Jun Cao; Hany Morcos; Dan Jump [50%] | 3.5h | 3.5h | 171 | 171 | 171 |  |
| 6 | 1.5 | Editorial staff meeting 5 |  | 1h | 2015-05-11 08:00 A | 2015-05-11 09:00 A |  | 100% |  | 2015-05-11 08:00 | 2015-05-11 09:00 | 1h |  |  | start no earlier than 2015-05-11 08:00 |  | Carole Poland; Jun Cao; Hany Morcos; Dan Jump [50%] | 3.5h | 3.5h | 171 | 171 | 171 |  |
| 7 | 1.6 | Editorial staff meeting 6 |  | 1h | 2015-05-18 08:00 A | 2015-05-18 09:00 A |  | 100% |  | 2015-05-18 08:00 | 2015-05-18 09:00 | 1h |  |  | start no earlier than 2015-05-18 08:00 |  | Carole Poland; Jun Cao; Hany Morcos; Dan Jump [50%] | 3.5h | 3.5h | 171 | 171 | 171 |  |
| 8 | 1.7 | Editorial staff meeting 7 |  | 1h | 2015-05-25 08:00 A | 2015-05-25 09:00 A |  | 100% |  | 2015-05-25 08:00 | 2015-05-25 09:00 | 1h |  |  | start no earlier than 2015-05-25 08:00 |  | Carole Poland; Jun Cao; Hany Morcos; Dan Jump [50%] | 3.5h | 3.5h | 171 | 171 | 171 |  |
| 9 | 1.8 | Editorial staff meeting 8 |  | 1h | 2015-06-01 08:00 | 2015-06-01 09:00 |  |  |  | 2015-06-01 08:00 | 2015-06-01 09:00 | 1h | 128.88d |  | start no earlier than 2015-06-01 08:00 |  | Carole Poland; Jun Cao; Hany Morcos; Dan Jump [50%] | 3.5h |  | 171 | 171 |  |  |
| 10 | 1.9 | Editorial staff meeting 9 |  | 1h | 2015-06-08 08:00 | 2015-06-08 09:00 |  |  |  | 2015-06-08 08:00 | 2015-06-08 09:00 | 1h | 123.88d |  | start no earlier than 2015-06-08 08:00 |  | Carole Poland; Jun Cao; Hany Morcos; Dan Jump [50%] | 3.5h |  | 171 | 171 |  |  |
| 11 | 1.10 | Editorial staff meeting 10 |  | 1h | 2015-06-15 08:00 | 2015-06-15 09:00 |  |  |  | 2015-06-15 08:00 | 2015-06-15 09:00 | 1h | 118.88d |  | start no earlier than 2015-06-15 08:00 |  | Carole Poland; Jun Cao; Hany Morcos; Dan Jump [50%] | 3.5h |  | 171 | 171 |  |  |
| 12 | 1.11 | Editorial staff meeting 11 |  | 1h | 2015-06-22 08:00 | 2015-06-22 09:00 |  |  |  | 2015-06-22 08:00 | 2015-06-22 09:00 | 1h | 113.88d |  | start no earlier than 2015-06-22 08:00 |  | Carole Poland; Jun Cao; Hany Morcos; Dan Jump [50%] | 3.5h |  | 171 | 171 |  |  |
| 13 | 1.12 | Editorial staff meeting 12 |  | 1h | 2015-06-29 08:00 | 2015-06-29 09:00 |  |  |  | 2015-06-29 08:00 | 2015-06-29 09:00 | 1h | 108.88d |  | start no earlier than 2015-06-29 08:00 |  | Carole Poland; Jun Cao; Hany Morcos; Dan Jump [50%] | 3.5h |  | 171 | 171 |  |  |
| 14 | 1.13 | Editorial staff meeting 13 |  | 1h | 2015-07-06 08:00 | 2015-07-06 09:00 |  |  |  | 2015-07-06 08:00 | 2015-07-06 09:00 | 1h | 103.88d |  | start no earlier than 2015-07-06 08:00 |  | Carole Poland; Jun Cao; Hany Morcos; Dan Jump [50%] | 3.5h |  | 171 | 171 |  |  |
| 15 | 2 | **Tiếp nhận bản thảo** |  | 37d | 2015-04-06 08:00 A | 2015-05-26 17:00 A |  | 100% |  | 2015-04-06 08:00 | 2015-05-25 12:00 | 35.5d |  |  |  |  |  | 468h | 468h | 12,504 | 18,264 | 12,504 |  |
| 16 | 2.1 | Đã nhận bản thảo | milestone | 0d | 2015-04-06 08:00 A | 2015-04-06 08:00 A |  | 100% |  | 2015-04-06 08:00 | 2015-04-06 08:00 | 0d |  |  |  |  |  |  |  |  |  |  |  |
| 17 | 2.2 | Biên tập nội dung |  | 15d | 2015-04-06 08:00 A | 2015-04-30 10:00 A | 16 | 100% |  | 2015-04-06 08:00 | 2015-04-30 10:00 | 15d |  |  |  |  | Đánh giá bản vẽ gốc | 120h | 120h |  | 6,300 |  | Full developmental edit |
| 18 | 2.3 | Đánh giá bản vẽ gốc |  | 10.25d | 2015-04-23 10:00 A | 2015-05-07 12:00 A | 17FS-5d | 100% |  | 2015-04-23 10:00 | 2015-05-07 12:00 | 10.25d |  |  |  |  | Hany Morcos; Jane Dow | 164h | 164h | 8,364 | 8,364 | 8,364 |  |
| 19 | 2.4 | Tác Giả xem lại bản biên tập nội dung |  | 13.5d | 2015-05-07 13:00 A | 2015-05-26 17:00 A | 17, 18 | 100% |  | 2015-05-07 13:00 | 2015-05-25 12:00 | 12d |  |  |  |  | Tad Orman; Copyeditors | 184h | 184h | 4,140 | 3,600 | 4,140 | Incorp must-fix issues |
| 20 | 2.5 | Bàn giao cho ban biên tập | milestone | 0d | 2015-05-26 17:00 A | 2015-05-26 17:00 A | 19 | 100% |  | 2015-05-25 12:00 | 2015-05-25 12:00 | 0d |  |  |  | 2015-05-29 17:00 | Carole Poland |  |  |  |  |  |  |
| 21 | 3 | **Biên tập** |  | 30.75d | 2015-05-27 08:00 A | 2015-07-08 15:00 | 15 | 12% | 27.13d | 2015-05-25 13:00 | 2015-07-03 14:00 | 29.12d | -1d | 0d |  |  |  | 408h | 48h | 16,030 | 15,670 | 2,448 |  |
| 22 | 3.1 | Sắp xếp bản thảo để sửa bản in |  | 4.75d | 2015-05-27 08:00 A | 2015-06-03 17:00 |  | 79% | 1d | 2015-05-25 13:00 | 2015-06-01 14:00 | 5.12d | -1d | 0d |  |  | Hany Morcos; Dan Jump [50%] | 60h | 48h | 3,060 | 3,060 | 2,448 | Address outstanding line edit issues |
| 23 | 3.2 | Sửa bản in |  | 12d | 2015-06-04 08:00 | 2015-06-19 17:00 | 22 |  |  | 2015-06-01 14:00 | 2015-06-16 16:00 | 11.25d | -1d | 0d |  |  | Copyeditors [200%] | 188h |  | 8,460 | 8,100 |  | Style Guide compliance |
| 24 | 3.3 | Tác giả xem lại bản sửa im |  | 10d | 2015-06-22 08:00 | 2015-07-03 17:00 | 23 |  |  | 2015-06-16 16:00 | 2015-06-30 16:00 | 10d | -1d | 0d |  |  | Tad Orman; Copyeditors [25%] | 100h |  | 900 | 900 |  | Incorp must-fix issues |
| 25 | 3.4 | Tổng hợp các chỉnh sửa bản in |  | 5.12d | 2015-07-01 13:00 | 2015-07-08 15:00 | 24FS-2.5% |  |  | 2015-06-26 11:00 | 2015-07-03 14:00 | 5.12d | -1d | 0d |  |  | Carole Poland; Dan Jump [50%] | 60h |  | 3,610 | 3,610 |  | Incorp must-fix issues |
| 26 | 3.5 | Bàn giao cho bộ phận sản xuất | milestone | 0d | 2015-07-08 15:00 | 2015-07-08 15:00 | 25 |  |  | 2015-07-03 14:00 | 2015-07-03 14:00 | 0d | -1d | 0d |  |  | Hany Morcos |  |  |  |  |  |  |

| ID | WBS | Task | Type | Duration | Start | Finish | Predecessors | Baseline start | Baseline finish | Baseline duration | Total slack | Free slack | Constraint | Calendar | Resources | Work | Cost | Baseline cost |
| --- | --- | --- | --- | --- | --- | --- | --- | --- | --- | --- | --- | --- | --- | --- | --- | --- | --- | --- |
| 27 | 4 | **thiết kế và sản xuất** |  | 57.25d | 2015-07-08 15:00 | 2015-09-25 17:00 | 21 | 2015-07-03 14:00 | 2015-09-23 16:00 | 58.25d | -1d | 0d |  |  |  | 888h | 46,679 | 46,679 |
| 28 | 4.1 | dàn trang |  | 15d | 2015-07-08 15:00 | 2015-07-29 15:00 |  | 2015-07-03 14:00 | 2015-07-24 14:00 | 15d | -1d | 0d |  |  | Jane Dow | 120h | 7,590 | 7,590 |
| 29 | 4.2 | Thiết kế minh họa bên trong |  | 15.25d | 2015-07-08 15:00 | 2015-07-29 17:00 | 28SS | 2015-07-03 14:00 | 2015-07-24 16:00 | 15.25d | -1d | 0d |  |  | Luis Sousa; Hany Morcos | 240h | 13,050 | 13,050 |
| 30 | 4.3 | **Xem lại bản dàn trang lần 1** |  | 30d | 2015-07-30 08:00 | 2015-09-09 17:00 | 29 | 2015-07-24 16:00 | 2015-09-04 16:00 | 30d | -1d | 0d |  |  |  | 320h | 13,860 | 13,860 |
| 31 | 4.3.1 | Đọc soát lỗi và lập chỉ mục |  | 10d | 2015-07-30 08:00 | 2015-08-12 17:00 |  | 2015-07-24 16:00 | 2015-08-07 16:00 | 10d | -1d | 0d | start no earlier than 2015-07-17 08:00 |  | Tad Orman; Copyeditors | 100h | 900 | 900 |
| 32 | 4.3.2 | Tổng hợp các chỉnh sửa từ lần xem lại 1 |  | 10d | 2015-08-13 08:00 | 2015-08-26 17:00 | 31 | 2015-08-07 16:00 | 2015-08-21 16:00 | 10d | -1d | 0d |  |  | Hany Morcos; Dan Jump [50%] | 120h | 6,120 | 6,120 |
| 33 | 4.3.3 | Gửi các trang đã soát lỗi cho Sản xuất | milestone | 0d | 2015-08-26 17:00 | 2015-08-26 17:00 | 32 | 2015-08-21 16:00 | 2015-08-21 16:00 | 0d | -1d | 0d |  |  | Hany Morcos |  |  |  |
| 34 | 4.3.4 | Nhập các chỉnh sửa trang và chỉ mục |  | 5d | 2015-08-27 08:00 | 2015-09-02 17:00 | 33 | 2015-08-21 16:00 | 2015-08-28 16:00 | 5d | -1d | 0d |  |  | Jane Dow; Dan Jump [50%] | 60h | 4,040 | 4,040 |
| 35 | 4.3.5 | Thiết kế bìa |  | 5d | 2015-09-03 08:00 | 2015-09-09 17:00 | 34 | 2015-08-28 16:00 | 2015-09-04 16:00 | 5d | -1d | 0d |  |  | Luis Sousa | 40h | 2,800 | 2,800 |
| 36 | 4.4 | **Xem lại bản dàn trang lần 2** |  | 12d | 2015-09-10 08:00 | 2015-09-25 17:00 |  | 2015-09-04 16:00 | 2015-09-23 16:00 | 13d | -1d | 0d |  |  |  | 120h | 6,345 | 6,345 |
| 37 | 4.4.1 | Đọc soát lỗi và xem lại |  | 6.5d | 2015-09-10 08:00 | 2015-09-18 12:00 | 35 | 2015-09-04 16:00 | 2015-09-15 11:00 | 6.5d | -1d | 0d |  |  | Hany Morcos | 40h | 1,800 | 1,800 |
| 38 | 4.4.2 | Gửi các trang đã soát lỗi cho Sản xuất | milestone | 0d | 2015-09-18 12:00 | 2015-09-18 12:00 | 37 | 2015-09-15 11:00 | 2015-09-15 11:00 | 0d | -1d | 0d |  |  | Hany Morcos |  |  |  |
| 39 | 4.4.3 | Xem lại lần cuối |  | 5d | 2015-09-21 08:00 | 2015-09-25 17:00 | 38 | 2015-09-16 16:00 | 2015-09-23 16:00 | 5d | 0d |  |  |  | Jane Dow; Hany Morcos [50%]; Carole Poland [50%]; Bound galley proofs [20 copies] | 80h | 4,545 | 4,545 |
| 40 | 4.5 | **Thiết kế website đi kèm sách** |  | 10d | 2015-09-10 08:00 | 2015-09-23 17:00 | 30 | 2015-09-04 16:00 | 2015-09-18 16:00 | 10d | 2d |  |  |  |  | 88h | 5,834 | 5,834 |
| 41 | 4.5.1 | Tạo bản thiết kế mẫu |  | 4.5d | 2015-09-10 08:00 | 2015-09-21 17:00 |  | 2015-09-04 16:00 | 2015-09-16 16:00 | 4.5d | 2d | 0d |  |  | Luis Sousa; Hany Morcos | 48h | 2,610 | 2,610 |
| 42 | 4.5.2 | Xem lại cùng tác giả |  | 2d | 2015-09-22 08:00 | 2015-09-23 17:00 | 41 | 2015-09-16 16:00 | 2015-09-18 16:00 | 2d | 2d |  |  |  | Luis Sousa; Tad Orman; Travel [0.1%]; Dan Jump [50%] | 40h | 3,224 | 3,224 |
| 43 | 5 | **Chuẩn bị màu và In ấn** |  | 44d | 2015-09-28 08:00 | 2015-11-26 17:00 | 40 | 2015-09-23 16:00 | 2015-11-26 16:00 | 46d | 0d |  |  |  |  | 328h | 5,310 | 5,310 |
| 44 | 5.1 | Gửi đến nhà màu |  | 1d | 2015-09-28 08:00 | 2015-09-28 17:00 | 36 | 2015-09-23 16:00 | 2015-09-28 16:00 | 1d | 0d |  |  | Monday-Wednesday | Hany Morcos | 8h | 310 | 310 |
| 45 | 5.2 | Tạo bản in thử |  | 10d | 2015-09-29 08:00 | 2015-10-12 17:00 | 44 | 2015-09-28 16:00 | 2015-10-12 16:00 | 10d | 0d |  |  |  | Color Setting Services | 80h | 5,000 | 5,000 |
| 46 | 5.3 | In và vận chuyển |  | 30d | 2015-10-16 08:00 | 2015-11-26 17:00 | 45FS+3d | 2015-10-15 16:00 | 2015-11-26 16:00 | 30d | 0d |  |  |  | Printing Service | 240h |  |  |
| 47 | 6 | **Chuẩn bị ra mắt sách** |  | 22d | 2015-09-29 08:00 | 2015-10-28 17:00 |  | 2015-09-28 16:00 | 2015-10-28 16:00 | 22d | 21d |  |  |  |  | 212h | 9,442 | 9,442 |
| 48 | 6.1 | Lên kế hoạch ra mắt |  | 5d | 2015-09-29 08:00 | 2015-10-05 17:00 | 44 | 2015-09-28 16:00 | 2015-10-05 16:00 | 5d | 21d | 0d |  |  | Carole Poland [50%]; Jane Dow | 36h | 2,062 | 2,062 |
| 49 | 6.2 | Phân công thành viên đội ra mắt |  | 1d | 2015-10-06 08:00 | 2015-10-06 17:00 | 48 | 2015-10-05 16:00 | 2015-10-06 16:00 | 1d | 21d | 0d |  |  | Carole Poland | 8h | 420 | 420 |
| 50 | 6.3 | Hoàn thành bảng câu hỏi cho tác giả |  | 5d | 2015-10-07 08:00 | 2015-10-13 17:00 | 49 | 2015-10-06 16:00 | 2015-10-13 16:00 | 5d | 21d | 0d |  |  | Hany Morcos; Tad Orman; Travel [0.1%] | 80h | 3,550 | 3,550 |
| 51 | 6.4 | Lên lịch phỏng vấn tác giả |  | 1d | 2015-10-14 08:00 | 2015-10-14 17:00 | 50 | 2015-10-13 16:00 | 2015-10-14 16:00 | 1d | 21d | 0d |  |  | Hany Morcos | 8h | 310 | 310 |
| 52 | 6.5 | Thiết kế và đặt hàng tài liệu tiếp thị |  | 10d | 2015-10-15 08:00 | 2015-10-28 17:00 | 51 | 2015-10-14 16:00 | 2015-10-28 16:00 | 10d | 21d |  |  |  | Hany Morcos | 80h | 3,100 | 3,100 |
